# 项目规划_于喜梅

How a schedule from MS Project changed from version to version. A marks actual dates.

## Version 1 (saved 2020-12-01)

Note of the change: yxm

| ID | WBS | Task | Duration | Start | Finish | Predecessors | Total float |
| --- | --- | --- | --- | --- | --- | --- | --- |
| 1 | 1 | **启动** | 4d | 2020-09-13 | 2020-09-16 |  |  |
| 2 |  | 组建核心团队 | 1d | 2020-09-13 | 2020-09-13 |  |  |
| 3 |  | 干系人分析 | 1d | 2020-09-13 | 2020-09-14 |  |  |
| 4 |  | 里程碑计划 | 1d | 2020-09-14 | 2020-09-14 |  |  |
| 5 |  | 制定项目章程 | 1.12d | 2020-09-15 | 2020-09-15 | 2, 3, 4 |  |
| 6 |  | 项目启动大会 | 1d | 2020-09-16 | 2020-09-16 | 5 |  |
| 7 | 2 | **规划** | 18d | 2020-09-16 | 2020-10-09 |  |  |
| 8 | 2.1 | **规划范围** | 5d | 2020-09-17 | 2020-09-23 |  |  |
| 9 |  | 制定需求说明书 | 1d | 2020-09-17 | 2020-09-17 | 6 |  |
| 10 |  | 界面设计 | 2d | 2020-09-18 | 2020-09-20 | 9 |  |
| 11 |  | 详细设计说明书 | 1d | 2020-09-21 | 2020-09-21 | 10 |  |
| 12 |  | 项目范围说明书 | 1d | 2020-09-21 | 2020-09-21 | 10 |  |
| 13 |  | 创建WBS | 1d | 2020-09-22 | 2020-09-22 | 10, 11, 12 |  |
| 14 |  | 形成范围基准 | 1d | 2020-09-23 | 2020-09-23 | 13 |  |
| 15 | 2.2 | **规划时间** | 4d | 2020-09-23 | 2020-09-28 |  |  |
| 16 |  | 估算资源 | 1d | 2020-09-23 | 2020-09-24 | 13 |  |
| 17 |  | 估算持续时间 | 1d | 2020-09-24 | 2020-09-25 | 13 |  |
| 18 |  | 制定进度计划 | 1d | 2020-09-25 | 2020-09-26 | 17 |  |
| 19 |  | 形成进度基准 | 1d | 2020-09-28 | 2020-09-28 | 18 |  |
| 20 | 2.3 | **规划成本** | 4d | 2020-09-24 | 2020-09-29 |  |  |
| 21 |  | 项目成本估算 | 1d | 2020-09-24 | 2020-09-25 | 14 |  |
| 22 |  | 项目预算 | 2d | 2020-09-25 | 2020-09-26 | 21 |  |
| 23 |  | 行成范围基准 | 2d | 2020-09-28 | 2020-09-29 | 22 |  |
| 24 | 2.4 | **规划质量** | 3d | 2020-09-30 | 2020-10-02 |  |  |
| 25 |  | 制定测试计划 | 2d | 2020-09-30 | 2020-10-01 | 23 |  |
| 26 |  | 指定测试用例 | 1d | 2020-10-02 | 2020-10-02 | 25 |  |
| 27 | 2.5 | **规划人力资源** | 4d | 2020-09-29 | 2020-10-02 |  |  |
| 28 |  | 制定人力资源计划 | 2d | 2020-09-29 | 2020-09-30 | 19 |  |
| 29 |  | 制定人力配备管理计划 | 1d | 2020-10-01 | 2020-10-01 | 28 |  |
| 30 | 2.6 | **规划沟通** | 1d | 2020-10-02 | 2020-10-03 |  |  |
| 31 |  | 制定沟通管理计划 | 1d | 2020-10-02 | 2020-10-03 | 29 |  |
| 32 | 2.7 | **规划采购** | 3d | 2020-10-02 | 2020-10-06 |  |  |
| 33 |  | 自制外购计划 | 2d | 2020-10-02 | 2020-10-03 | 23, 29 |  |
| 34 |  | 制定采购文件 | 1d | 2020-10-05 | 2020-10-05 | 33 | 1d |
| 35 | 2.8 | **规划风险** | 3d | 2020-10-05 | 2020-10-07 |  | 0d |
| 36 |  | 识别风险 | 1d | 2020-10-05 | 2020-10-05 | 26, 13, 24 |  |
| 37 |  | 风险分析 | 1d | 2020-10-06 | 2020-10-06 | 36 | 0d |
| 38 |  | 制定风险登记册 | 1d | 2020-10-07 | 2020-10-07 | 37 | 0d |
| 39 |  | 规划整合 | 1d | 2020-10-08 | 2020-10-08 | 38 | 0d |
| 40 | 3 | **执行与监控** | 16d | 2020-10-10 | 2020-10-30 |  |  |
| 41 |  | 组建项目团队 | 1d | 2020-10-09 | 2020-10-09 | 39 |  |
| 42 | 3.2 | **项目执行** | 11d | 2020-10-11 | 2020-10-26 |  | 0d |
| 43 | 3.2.1 | **首页模块** | 7d | 2020-10-11 | 2020-10-19 |  |  |
| 44 |  | 笔记展示 | 4d | 2020-10-11 | 2020-10-14 |  |  |
| 45 |  | 搜索笔记 | 3.12d | 2020-10-15 | 2020-10-18 | 44 |  |
| 46 | 3.2.2 | **用户模块** | 11d | 2020-10-11 | 2020-10-26 |  | 0d |
| 47 |  | 注册登录 | 2d | 2020-10-11 | 2020-10-12 | 41 |  |
| 48 |  | 个人中心 | 5d | 2020-10-13 | 2020-10-19 | 47 |  |
| 49 |  | 关注 | 2d | 2020-10-20 | 2020-10-21 | 48 |  |
| 50 |  | 发布笔记 | 5d | 2020-10-20 | 2020-10-26 | 48 | 0d |
| 51 |  | 发送消息 | 3d | 2020-10-20 | 2020-10-23 | 48 |  |
| 52 |  | 个人设置 | 4d | 2020-10-14 | 2020-10-17 | 47 |  |
| 53 | 3.2.3 | **笔记模块** | 9d | 2020-10-11 | 2020-10-21 |  |  |
| 54 |  | 展示笔记详情 | 5d | 2020-10-12 | 2020-10-16 | 41 |  |
| 55 |  | 点赞，收藏笔记 | 2d | 2020-10-19 | 2020-10-20 | 54 |  |
| 56 |  | 收藏夹 | 1d | 2020-10-21 | 2020-10-21 | 55 |  |
| 57 |  | 评论 | 3d | 2020-10-19 | 2020-10-21 | 54 | 0d |
| 58 |  | 关注 | 1d | 2020-10-19 | 2020-10-19 | 54 |  |
| 59 | 3.2.4 | **发现模块** | 10d | 2020-10-11 | 2020-10-22 |  |  |
| 60 |  | 同城笔记展示 | 4d | 2020-10-15 | 2020-10-20 | 44 | 2d |
| 61 |  | 关注用户笔记展示 | 2d | 2020-10-21 | 2020-10-22 | 48, 58 |  |
| 62 | 3.2.5 | **线上旅游模块** | 8d | 2020-10-12 | 2020-10-21 |  | 0d |
| 63 |  | 旅游线路简介 | 5d | 2020-10-12 | 2020-10-16 | 41 |  |
| 64 |  | 线上旅游打卡 | 3d | 2020-10-19 | 2020-10-21 | 63 | 3d |
| 65 | 3.3 | **项目监控** | 14d | 2020-10-11 | 2020-10-28 |  |  |
| 66 |  | 各项指标监控 | 4d | 2020-10-21 | 2020-10-26 | 41 |  |
| 67 |  | 监控评审 | 1.12d | 2020-10-27 | 2020-10-27 | 66 |  |
| 68 |  | 变更评审 | 1d | 2020-10-28 | 2020-10-28 | 67 |  |
| 69 |  | 例会 | 11.12d | 2020-10-12 | 2020-10-27 | 41 |  |
| 70 | 3.4 | **管理干系人** | 15d | 2020-10-11 | 2020-10-29 |  |  |

| ID | WBS | Task | Duration | Start | Finish | Predecessors | Total float | Constraint |
| --- | --- | --- | --- | --- | --- | --- | --- | --- |
| 71 |  | 发布项目信息 | 2d | 2020-10-27 | 2020-10-28 | 42 |  |  |
| 72 |  | 报告监控指标 | 1d | 2020-10-29 | 2020-10-29 | 71 |  |  |
| 73 |  | 干系人沟通 | 11.12d | 2020-10-12 | 2020-10-26 | 41 |  |  |
| 74 | 3.5 | **团队建设** | 14d | 2020-10-11 | 2020-10-28 |  |  |  |
| 75 |  | 娱乐活动 | 1d | 2020-10-16 | 2020-10-16 |  |  |  |
| 76 |  | 项目各功能展示 | 2d | 2020-10-27 | 2020-10-28 | 42 |  |  |
| 77 | 3.6 | **收尾** | 2d | 2020-10-29 | 2020-10-30 |  |  |  |
| 78 |  | 项目终验 | 0.88d | 2020-10-30 | 2020-10-30 | 42, 65, 70, 74 | 0d | finish no earlier than 2020-10-30 |

## Version 2 (saved 2020-12-09)

Note of the change: yxm

Last finish stays 2020-10-30.

Changed:

| ID | Task | Start | Finish | Other |
| --- | --- | --- | --- | --- |
| 1 | **启动** |  |  | resources none → 储备 [0.1%]; 间接成本 [0.1%] |
| 2 | 组建核心团队 | 2020-09-13 → 2020-09-14 (+1d) | 2020-09-13 → 2020-09-14 (+1d) | resources none → 项目经理; UI专家; 设计专家; 需求专家; 质量专家 |
| 3 | 干系人分析 |  |  | resources none → 项目经理 [70%]; 需求专家 [30%] |
| 4 | 里程碑计划 |  |  | resources none → 项目经理 |
| 5 | 制定项目章程 |  |  | resources none → 项目经理 |
| 6 | 项目启动大会 |  |  | resources none → 项目经理; UI专家; 需求专家; 质量专家; 设计专家; 程序员1; 测试员1 |
| 8 | **规划范围** |  |  | resources none → 储备 [0.1%]; 间接成本 [0.1%] |
| 9 | 制定需求说明书 |  |  | resources none → 需求专家 |
| 10 | 界面设计 |  |  | resources none → 设计专家 |
| 11 | 详细设计说明书 |  |  | resources none → 设计专家 |
| 12 | 项目范围说明书 |  |  | resources none → 项目经理 |
| 13 | 创建WBS |  |  | resources none → 项目经理 |
| 14 | 形成范围基准 |  |  | resources none → 储备 [0.1%]; 间接成本 [0.1%] |
| 16 | 估算资源 |  |  | resources none → 项目经理 |
| 17 | 估算持续时间 |  |  | resources none → 项目经理 |
| 18 | 制定进度计划 |  |  | resources none → 项目经理 |
| 19 | 形成进度基准 |  |  | resources none → 项目经理 |
| 21 | 项目成本估算 |  |  | resources none → 项目经理 |
| 22 | 项目预算 |  |  | resources none → 项目经理 |
| 23 | 行成范围基准 |  |  | resources none → 项目经理 |
| 25 | 制定测试计划 |  |  | resources none → 质量专家 |
| 26 | 指定测试用例 |  |  | resources none → 质量专家 |
| 28 | 制定人力资源计划 |  |  | resources none → 需求专家; 项目经理 |
| 29 | 制定人力配备管理计划 |  |  | resources none → 项目经理 |
| 31 | 制定沟通管理计划 |  |  | resources none → 项目经理 |
| 33 | 自制外购计划 |  |  | resources none → 项目经理 |
| 34 | 制定采购文件 |  |  | resources none → 项目经理 |
| 36 | 识别风险 |  |  | resources none → 项目经理 |
| 37 | 风险分析 |  |  | resources none → 项目经理 |
| 38 | 制定风险登记册 |  |  | resources none → 项目经理 |
| 39 | 规划整合 |  |  | resources none → 项目经理 |
| 41 | 组建项目团队 |  |  | resources none → 项目经理; 需求专家; 质量专家; 设计专家; UI专家; 程序员1; 程序员2; 程序员3; 测试员1; 测试员2 |
| 44 | 笔记展示 |  |  | resources none → 程序员1 |
| 45 | 搜索笔记 |  |  | resources none → 程序员1 |
| 47 | 注册登录 |  |  | resources none → 程序员2 |
| 48 | 个人中心 |  |  | resources none → 程序员2 |
| 49 | 关注 |  |  | resources none → 程序员2 |
| 50 | 发布笔记 |  |  | resources none → 程序员3 |
| 51 | 发送消息 |  |  | resources none → 程序员3 |
| 52 | 个人设置 |  |  | resources none → 程序员2 |
| 54 | 展示笔记详情 |  |  | resources none → 程序员1 |
| 55 | 点赞，收藏笔记 |  |  | resources none → 程序员1 |
| 56 | 收藏夹 |  |  | resources none → 程序员2 |
| 57 | 评论 |  |  | resources none → 程序员1 |
| 58 | 关注 |  |  | resources none → 程序员1 |
| 60 | 同城笔记展示 |  |  | resources none → 程序员3 |
| 61 | 关注用户笔记展示 |  |  | resources none → 程序员3 |
| 63 | 旅游线路简介 |  |  | resources none → 程序员1; 程序员2 |
| 64 | 线上旅游打卡 |  |  | resources none → 程序员2; 程序员3 |
| 66 | 各项指标监控 |  |  | resources none → 测试员1; UI专家; 需求专家; 质量专家; 设计专家; 项目经理 |
| 67 | 监控评审 |  |  | resources none → UI专家; 设计专家; 项目经理; 需求专家; 质量专家 |
| 68 | 变更评审 |  |  | resources none → UI专家; 设计专家; 项目经理; 需求专家; 质量专家 |
| 69 | 例会 |  |  | resources none → UI专家; 测试员1; 程序员1; 储备 [0.1%]; 间接成本 [0.1%]; 设计专家; 项目经理; 需求专家; 质量专家 |
| 71 | 发布项目信息 |  |  | resources none → 项目经理 |
| 72 | 报告监控指标 |  |  | resources none → 项目经理 |
| 73 | 干系人沟通 |  |  | resources none → 项目经理 |
| 75 | 娱乐活动 |  |  | resources none → UI专家; 测试员1; 测试员2; 程序员1; 程序员2; 程序员3; 储备 [0.1%]; 间接成本 [0.1%]; 设计专家; 项目经理; 需求专家; 质量专家 |
| 76 | 项目各功能展示 |  |  | resources none → UI专家; 程序员1; 程序员2; 程序员3; 设计专家; 项目经理; 需求专家; 质量专家 |
| 78 | 项目终验 |  |  | resources none → UI专家; 测试员1; 测试员2; 程序员1; 程序员2; 程序员3; 设计专家; 项目经理; 需求专家; 质量专家 |

## Version 3 (saved 2020-12-09)

Note of the change: yxm

Last finish 2020-10-30 → 2020-11-05 (+6d).

Changed:

| ID | Task | Start | Finish | Duration | Total float | Predecessors | Other |
| --- | --- | --- | --- | --- | --- | --- | --- |
| 1 | **启动** |  |  | 4d → 3d |  |  | resources 储备 [0.1%]; 间接成本 [0.1%] → none |
| 2 | 组建核心团队 | 2020-09-14 → 2020-09-13 (-1d) | 2020-09-14 → 2020-09-13 (-1d) |  |  |  | resources 项目经理; UI专家; 设计专家; 需求专家; 质量专家 → 项目经理 [30%]; UI专家; 设计专家; 需求专家 [50%]; 质量专家 |
| 3 | 干系人分析 |  | 2020-09-14 → 2020-09-13 (-1d) | 1d → 0d |  |  | resources 项目经理 [70%]; 需求专家 [30%] → 项目经理 [30%]; 需求专家 [50%] |
| 4 | 里程碑计划 | 2020-09-14 → 2020-09-16 (+2d) | 2020-09-14 → 2020-09-16 (+2d) |  |  |  | resources 项目经理 → 项目经理 [50%] |
| 5 | 制定项目章程 | 2020-09-15 → 2020-09-14 (-1d) | 2020-09-15 → 2020-09-14 (-1d) | 1.12d → 1d |  |  |  |
| 6 | 项目启动大会 |  |  |  |  |  | resources 项目经理; UI专家; 需求专家; 质量专家; 设计专家; 程序员1; 测试员1 → 项目经理 [50%]; UI专家 [50%]; 需求专家 [50%]; 质量专家 [50%]; 设计专家 [50%]; 程序员1 [50%]; 测试员1 [50%] |
| 8 | **规划范围** |  |  |  |  |  | resources 储备 [0.1%]; 间接成本 [0.1%] → none |
| 13 | 创建WBS | 2020-09-22 → 2020-09-23 (+1d) | 2020-09-22 → 2020-09-23 (+1d) |  |  |  | resources 项目经理 → 项目经理 [50%] |
| 14 | 形成范围基准 |  |  |  |  | 13 → 12 | resources 储备 [0.1%]; 间接成本 [0.1%] → none |
| 15 | **规划时间** |  |  | 4d → 5d |  |  |  |
| 16 | 估算资源 | 2020-09-23 → 2020-09-24 (+1d) |  |  |  |  | resources 项目经理 → 项目经理 [50%] |
| 17 | 估算持续时间 |  |  |  |  |  | resources 项目经理 → 项目经理 [20%] |
| 18 | 制定进度计划 |  | 2020-09-26 → 2020-09-27 (+1d) | 1d → 2d |  |  | resources 项目经理 → 项目经理 [20%] |
| 19 | 形成进度基准 |  |  |  |  |  | resources 项目经理 → 项目经理 [20%] |
| 21 | 项目成本估算 |  |  |  |  |  | resources 项目经理 → 项目经理 [20%] |
| 22 | 项目预算 |  | 2020-09-26 → 2020-09-25 (-1d) | 2d → 1d |  |  | resources 项目经理 → 项目经理 [20%] |
| 23 | 行成范围基准 |  | 2020-09-29 → 2020-09-28 (-1d) | 2d → 1d |  |  | resources 项目经理 → 项目经理 [20%] |
| 27 | **规划人力资源** |  |  | 4d → 3.12d |  |  |  |
| 28 | 制定人力资源计划 | 2020-09-29 → 2020-09-30 (+1d) |  | 2d → 1d |  |  | resources 需求专家; 项目经理 → 需求专家; 项目经理 [20%] |
| 31 | 制定沟通管理计划 |  | 2020-10-03 → 2020-10-02 (-1d) |  |  |  | resources 项目经理 → 项目经理 [50%] |
| 33 | 自制外购计划 |  | 2020-10-03 → 2020-10-02 (-1d) | 2d → 1d |  |  | resources 项目经理 → 项目经理 [50%] |
| 34 | 制定采购文件 |  |  |  | 1d → 21d |  | constraint none → finish no earlier than 2020-10-05; resources 项目经理 → 项目经理 [50%] |
| 35 | **规划风险** |  | 2020-10-07 → 2020-10-08 (+1d) |  | 0d → -0.75d |  |  |
| 36 | 识别风险 |  |  |  |  |  | resources 项目经理 → 项目经理 [50%] |
| 37 | 风险分析 | 2020-10-06 → 2020-10-07 (+1d) | 2020-10-06 → 2020-10-07 (+1d) | 1d → 0.88d | 0d → -0.75d |  | constraint none → finish no earlier than 2020-10-07 |
| 38 | 制定风险登记册 | 2020-10-07 → 2020-10-08 (+1d) | 2020-10-07 → 2020-10-08 (+1d) |  | 0d → -0.75d |  |  |
| 39 | 规划整合 | 2020-10-08 → 2020-10-09 (+1d) | 2020-10-08 → 2020-10-09 (+1d) |  | 0d → -0.75d |  |  |
| 40 | **执行与监控** | 2020-10-10 → 2020-10-11 (+1d) | 2020-10-30 → 2020-11-05 (+6d) | 16d → 19d |  |  |  |
| 42 | **项目执行** |  | 2020-10-26 → 2020-10-29 (+3d) | 11d → 14d | 0d → none |  |  |
| 43 | **首页模块** |  | 2020-10-19 → 2020-10-18 (-1d) | 7d → 6d |  |  |  |
| 44 | 笔记展示 |  | 2020-10-14 → 2020-10-16 (+2d) |  |  |  | resources 程序员1 → 程序员1 [90%] |
| 45 | 搜索笔记 | 2020-10-15 → 2020-10-16 (+1d) |  | 3.12d → 2d |  |  | resources 程序员1 → 程序员1 [50%] |
| 46 | **用户模块** |  | 2020-10-26 → 2020-10-28 (+2d) | 11d → 13d | 0d → none |  |  |
| 47 | 注册登录 |  |  |  |  |  | resources 程序员2 → 程序员2 [60%] |
| 48 | 个人中心 | 2020-10-13 → 2020-10-14 (+1d) | 2020-10-19 → 2020-10-21 (+2d) |  |  |  | resources 程序员2 → 程序员2 [20%] |
| 49 | 关注 | 2020-10-20 → 2020-10-21 (+1d) | 2020-10-21 → 2020-10-23 (+2d) |  |  |  | resources 程序员2 → 程序员2 [20%] |
| 50 | 发布笔记 | 2020-10-20 → 2020-10-23 (+3d) | 2020-10-26 → 2020-10-23 (-3d) | 5d → 0.88d | 0d → none |  | constraint none → finish no earlier than 2020-10-23; resources 程序员3 → 程序员2 [40%] |
| 51 | 发送消息 | 2020-10-20 → 2020-10-21 (+1d) | 2020-10-23 → 2020-10-25 (+2d) |  |  |  | resources 程序员3 → 程序员2 [40%] |
| 52 | 个人设置 |  | 2020-10-17 → 2020-10-18 (+1d) |  |  |  | resources 程序员2 → 程序员2 [50%] |
| 53 | **笔记模块** |  |  | 9d → 8d |  |  |  |
| 54 | 展示笔记详情 |  | 2020-10-16 → 2020-10-18 (+2d) |  |  |  | resources 程序员1 → 程序员3 [50%] |
| 55 | 点赞，收藏笔记 |  | 2020-10-20 → 2020-10-19 (-1d) | 2d → 1d |  |  | resources 程序员1 → 程序员3 [30%] |
| 56 | 收藏夹 |  |  |  |  |  | resources 程序员2 → 程序员3 [20%] |
| 57 | 评论 |  |  | 3d → 2d | 0d → none |  | constraint none → finish no earlier than 2020-10-21; resources 程序员1 → 程序员3 [30%] |
| 58 | 关注 |  |  |  |  |  | resources 程序员1 → 程序员3 [30%] |
| 59 | **发现模块** |  |  | 10d → 9d |  |  |  |
| 60 | 同城笔记展示 | 2020-10-15 → 2020-10-18 (+3d) | 2020-10-20 → 2020-10-19 (-1d) | 4d → 2d | 2d → none |  | constraint none → start no earlier than 2020-10-18; resources 程序员3 → 程序员1 [36%] |
| 61 | 关注用户笔记展示 |  |  |  |  |  | resources 程序员3 → 程序员1 [80%] |
| 62 | **线上旅游模块** | 2020-10-12 → 2020-10-14 (+2d) | 2020-10-21 → 2020-10-29 (+8d) | 8d → 11d | 0d → none |  |  |
| 63 | 旅游线路简介 | 2020-10-12 → 2020-10-14 (+2d) | 2020-10-16 → 2020-10-21 (+5d) |  |  |  | resources 程序员1; 程序员2 → 程序员2 [20%] |
| 64 | 线上旅游打卡 | 2020-10-19 → 2020-10-21 (+2d) | 2020-10-21 → 2020-10-29 (+8d) | 3d → 6d | 3d → none |  | resources 程序员2; 程序员3 → 程序员3 [50%] |
| 65 | **项目监控** |  | 2020-10-28 → 2020-10-29 (+1d) |  |  |  |  |
| 66 | 各项指标监控 |  |  |  |  |  | resources 测试员1; UI专家; 需求专家; 质量专家; 设计专家; 项目经理 → 测试员1 [50%]; UI专家 [50%]; 需求专家 [50%]; 质量专家 [50%]; 设计专家 [50%]; 项目经理 [30%] |
| 67 | 监控评审 | 2020-10-27 → 2020-10-28 (+1d) | 2020-10-27 → 2020-10-28 (+1d) | 1.12d → 1d |  |  | resources UI专家; 设计专家; 项目经理; 需求专家; 质量专家 → UI专家 [50%]; 设计专家 [50%]; 项目经理 [30%]; 需求专家 [50%]; 质量专家 [50%] |
| 68 | 变更评审 | 2020-10-28 → 2020-10-29 (+1d) | 2020-10-28 → 2020-10-29 (+1d) |  |  |  | resources UI专家; 设计专家; 项目经理; 需求专家; 质量专家 → UI专家 [10%]; 设计专家 [10%]; 项目经理 [10%]; 需求专家 [10%]; 质量专家 [10%] |
| 69 | 例会 |  | 2020-10-27 → 2020-10-26 (-1d) | 11.12d → 11d |  |  | resources UI专家; 测试员1; 程序员1; 储备 [0.1%]; 间接成本 [0.1%]; 设计专家; 项目经理; 需求专家; 质量专家 → UI专家 [10%]; 测试员1 [10%]; 程序员1 [10%]; 设计专家 [10%]; 项目经理 [10%]; 需求专家 [10%]; 质量专家 [10%] |
| 70 | **管理干系人** |  |  | 15d → 14d |  |  |  |
| 71 | 发布项目信息 | 2020-10-27 → 2020-10-28 (+1d) |  | 2d → 1d |  | 42 → none | resources 项目经理 → 项目经理 [20%] |
| 72 | 报告监控指标 |  |  |  |  |  | resources 项目经理 → 项目经理 [90%] |
| 73 | 干系人沟通 |  |  |  |  |  | resources 项目经理 → 项目经理 [40%] |
| 74 | **团队建设** | 2020-10-11 → 2020-10-16 (+5d) | 2020-10-28 → 2020-11-02 (+5d) | 14d → 13d |  |  |  |
| 75 | 娱乐活动 |  |  |  |  |  | resources UI专家; 测试员1; 测试员2; 程序员1; 程序员2; 程序员3; 储备 [0.1%]; 间接成本 [0.1%]; 设计专家; 项目经理; 需求专家; 质量专家 → UI专家 [50%]; 测试员1 [50%]; 测试员2 [50%]; 程序员1 [26%]; 程序员2 [10%]; 程序员3 [50%]; 设计专家 [50%]; 项目经理 [50%]; 需求专家 [50%]; 质量专家 [50%] |
| 76 | 项目各功能展示 | 2020-10-27 → 2020-11-02 (+6d) | 2020-10-28 → 2020-11-02 (+5d) | 2d → 1.12d |  |  | resources UI专家; 程序员1; 程序员2; 程序员3; 设计专家; 项目经理; 需求专家; 质量专家 → UI专家 [30%]; 程序员1 [30%]; 程序员2 [30%]; 程序员3 [30%]; 设计专家 [30%]; 项目经理 [30%]; 需求专家 [30%]; 质量专家 [30%] |
| 77 | **收尾** | 2020-10-29 → 2020-11-04 (+6d) | 2020-10-30 → 2020-11-05 (+6d) |  |  |  |  |
| 78 | 项目终验 | 2020-10-30 → 2020-11-04 (+5d) | 2020-10-30 → 2020-11-05 (+6d) | 0.88d → 2d | 0d → none |  | constraint finish no earlier than 2020-10-30 → finish no earlier than 2020-11-04; resources UI专家; 测试员1; 测试员2; 程序员1; 程序员2; 程序员3; 设计专家; 项目经理; 需求专家; 质量专家 → UI专家 [50%]; 测试员1 [50%]; 测试员2 [50%]; 程序员1 [50%]; 程序员2 [50%]; 程序员3 [50%]; 设计专家 [50%]; 项目经理 [50%]; 需求专家 [50%]; 质量专家 [50%] |
