# 项目规划

How a schedule from MS Project changed from version to version. A marks actual dates.

## Version 1 (saved 2020-12-01)

Note of the change: zs

| ID | WBS | Task | Duration | Start | Finish | Predecessors | Constraint |
| --- | --- | --- | --- | --- | --- | --- | --- |
| 1 | 1 | **启动** | 5d | 2020-10-15 | 2020-10-21 |  |  |
| 2 |  | 组件核心团队 | 3d | 2020-10-15 | 2020-10-17 |  |  |
| 3 |  | 干系人分析 | 1d | 2020-10-18 | 2020-10-18 |  |  |
| 4 |  | 里程碑计划 | 1d | 2020-10-19 | 2020-10-19 |  |  |
| 5 |  | 制定项目章程 | 1d | 2020-10-20 | 2020-10-20 | 2, 3, 4 |  |
| 6 |  | 项目启动大会 | 1d | 2020-10-21 | 2020-10-21 | 5 |  |
| 7 | 2 | **规划** | 13d | 2020-10-22 | 2020-11-07 |  |  |
| 8 | 2.1 | **规划范围** | 6d | 2020-10-22 | 2020-10-30 |  |  |
| 9 |  | 制定需求说明书 | 1d | 2020-10-22 | 2020-10-22 | 6 | start no earlier than 2020-10-22 |
| 10 |  | UI界面设计 | 1d | 2020-10-23 | 2020-10-23 | 9 |  |
| 11 |  | 详细设计说明书 | 1d | 2020-10-24 | 2020-10-24 | 10 |  |
| 12 |  | 形成范围基准 | 2d | 2020-10-25 | 2020-10-26 | 11 |  |
| 13 | 2.2 | **规划进度** | 2d | 2020-10-31 | 2020-11-01 |  |  |
| 14 |  | 制定进度计划 | 1d | 2020-10-31 | 2020-10-31 | 12 |  |
| 15 |  | 形成进度基准 | 1d | 2020-11-01 | 2020-11-01 | 14 |  |
| 16 | 2.3 | **规划成本** | 3d | 2020-11-02 | 2020-11-04 |  |  |
| 17 |  | 项目成本估算 | 1d | 2020-11-02 | 2020-11-02 |  |  |
| 18 |  | 项目预算 | 1d | 2020-11-03 | 2020-11-03 |  |  |
| 19 |  | 形成范围基准 | 1d | 2020-11-04 | 2020-11-04 |  |  |
| 20 | 2.4 | **规划风险** | 3d | 2020-11-05 | 2020-11-07 |  |  |
| 21 |  | 识别风险 | 1d | 2020-11-05 | 2020-11-05 |  |  |
| 22 |  | 风险分析 | 1d | 2020-11-06 | 2020-11-06 |  |  |
| 23 |  | 制定风险手册 | 1d | 2020-11-07 | 2020-11-07 |  |  |
| 24 | 3 | **执行与监控** | 30d | 2020-11-08 | 2020-12-18 |  |  |
| 25 |  | 组件项目团队 | 1d | 2020-11-08 | 2020-11-08 |  |  |
| 26 | 3.2 | **项目执行** | 14d | 2020-11-09 | 2020-11-26 | 25 |  |
| 27 |  | 首页模块 | 4d | 2020-11-09 | 2020-11-12 |  |  |
| 28 |  | 用户模块 | 2d | 2020-11-13 | 2020-11-14 |  |  |
| 29 |  | 笔记模块 | 4d | 2020-11-15 | 2020-11-18 |  |  |
| 30 |  | 发现模块 | 3d | 2020-11-19 | 2020-11-21 |  |  |
| 31 |  | 线上旅游模块 | 4d | 2020-11-22 | 2020-11-25 |  |  |
| 32 |  | 功能展示 | 1d | 2020-11-26 | 2020-11-26 |  |  |
| 33 | 3.3 | **项目监控** | 2d | 2020-11-27 | 2020-11-29 |  |  |
| 34 |  | 各项指标监控 | 1d | 2020-11-27 | 2020-11-27 |  |  |
| 35 |  | 监控评审 | 1d | 2020-11-28 | 2020-11-28 |  |  |
| 36 |  | 例会 | 1d | 2020-11-29 | 2020-11-29 |  |  |
| 37 | 3.4 | **团队建设** | 2d | 2020-11-30 | 2020-12-01 |  |  |
| 38 |  | 培训 | 1d | 2020-11-30 | 2020-11-30 |  |  |
| 39 |  | 娱乐 | 1d | 2020-12-01 | 2020-12-01 |  |  |
| 40 | 3.5 | **收尾** | 2d | 2020-12-02 | 2020-12-03 |  |  |
| 41 |  | 项目终验 | 1d | 2020-12-02 | 2020-12-02 |  |  |
| 42 |  | 项目收尾 | 1d | 2020-12-03 | 2020-12-03 |  |  |

## Version 2 (saved 2020-12-08)

Note of the change: zs

Last finish 2020-12-18 → 2020-12-03 (-15d). Complete tasks 0 → 31.

Changed:

| ID | Task | Start | Finish | Duration | Complete | Other |
| --- | --- | --- | --- | --- | --- | --- |
| 1 | **启动** | 2020-10-15 A |  |  | 0% → 99% | resources none → 储备资金 [0.1%]; 间接成本 [0.1%] |
| 2 | 组件核心团队 | 2020-10-15 A | 2020-10-17 A |  | 0% → 100% |  |
| 3 | 干系人分析 | 2020-10-18 A | 2020-10-18 A |  | 0% → 100% |  |
| 4 | 里程碑计划 | 2020-10-19 A | 2020-10-19 A |  | 0% → 100% |  |
| 5 | 制定项目章程 | 2020-10-20 A | 2020-10-20 A |  | 0% → 100% |  |
| 6 | 项目启动大会 | 2020-10-21 A | 2020-10-21 A |  | 0% → 100% |  |
| 7 | **规划** | 2020-10-22 A |  |  | 0% → 99% | resources none → 储备资金 [0.1%]; 间接成本 [0.1%] |
| 8 | **规划范围** | 2020-10-22 A |  |  | 0% → 100% |  |
| 9 | 制定需求说明书 | 2020-10-22 A | 2020-10-22 A |  | 0% → 100% |  |
| 10 | UI界面设计 | 2020-10-23 A | 2020-10-23 A |  | 0% → 100% |  |
| 11 | 详细设计说明书 | 2020-10-24 A | 2020-10-24 A |  | 0% → 100% |  |
| 12 | 形成范围基准 | 2020-10-25 A | 2020-10-26 A |  | 0% → 100% |  |
| 13 | **规划进度** | 2020-10-31 A | 2020-11-01 A |  | 0% → 100% |  |
| 14 | 制定进度计划 | 2020-10-31 A | 2020-10-31 A |  | 0% → 100% |  |
| 15 | 形成进度基准 | 2020-11-01 A | 2020-11-01 A |  | 0% → 100% |  |
| 16 | **规划成本** | 2020-11-02 A | 2020-11-04 A |  | 0% → 100% |  |
| 17 | 项目成本估算 | 2020-11-02 A | 2020-11-02 A |  | 0% → 100% |  |
| 18 | 项目预算 | 2020-11-03 A | 2020-11-03 A |  | 0% → 100% |  |
| 19 | 形成范围基准 | 2020-11-04 A | 2020-11-04 A |  | 0% → 100% |  |
| 20 | **规划风险** | 2020-11-05 A | 2020-11-07 A |  | 0% → 100% |  |
| 21 | 识别风险 | 2020-11-05 A | 2020-11-05 A |  | 0% → 100% |  |
| 22 | 风险分析 | 2020-11-06 A | 2020-11-06 A |  | 0% → 100% |  |
| 23 | 制定风险手册 | 2020-11-07 A | 2020-11-07 A |  | 0% → 100% |  |
| 24 | **执行与监控** | 2020-11-08 A | 2020-12-18 → 2020-12-01 (-17d) | 30d → 18d | 0% → 99% | resources none → 储备资金 [0.1%]; 间接成本 [0.1%] |
| 25 | 组件项目团队 | 2020-11-08 A | 2020-11-08 A |  | 0% → 100% |  |
| 26 | **项目执行** | 2020-11-09 A | 2020-11-26 A |  | 0% → 100% |  |
| 27 | 首页模块 | 2020-11-09 A | 2020-11-12 A |  | 0% → 100% |  |
| 28 | 用户模块 | 2020-11-13 A | 2020-11-14 A |  | 0% → 100% |  |
| 29 | 笔记模块 | 2020-11-15 A | 2020-11-18 A |  | 0% → 100% |  |
| 30 | 发现模块 | 2020-11-19 A | 2020-11-21 A |  | 0% → 100% |  |
| 31 | 线上旅游模块 | 2020-11-22 A | 2020-11-25 A |  | 0% → 100% |  |
| 32 | 功能展示 | 2020-11-26 A | 2020-11-26 A |  | 0% → 100% |  |
| 33 | **项目监控** | 2020-11-27 A | 2020-11-29 A |  | 0% → 100% |  |
| 34 | 各项指标监控 | 2020-11-27 A | 2020-11-27 A |  | 0% → 100% |  |
| 35 | 监控评审 | 2020-11-28 A | 2020-11-28 A |  | 0% → 100% |  |
| 36 | 例会 | 2020-11-29 A | 2020-11-29 A |  | 0% → 100% |  |
| 37 | **团队建设** | 2020-11-30 A | 2020-12-01 A |  | 0% → 100% |  |
| 38 | 培训 | 2020-11-30 A | 2020-11-30 A |  | 0% → 100% |  |
| 39 | 娱乐 | 2020-12-01 A | 2020-12-01 A |  | 0% → 100% |  |
| 40 | **收尾** | 2020-12-02 A |  |  | 0% → 99% | resources none → 储备资金 [0.1%]; 间接成本 [0.1%] |
| 41 | 项目终验 | 2020-12-02 A | 2020-12-02 A |  | 0% → 100% |  |
| 42 | 项目收尾 | 2020-12-03 A | 2020-12-03 A |  | 0% → 100% |  |
