# 项目规划-田春雨

How a schedule from MS Project changed from version to version. A marks actual dates.

## Version 1 (saved 2020-11-27)

Note of the change: tcy

| ID | WBS | Task | Duration | Start | Finish | Total float |
| --- | --- | --- | --- | --- | --- | --- |
| 1 | 1 | **启动** | 1d | 2020-11-27 | 2020-11-27 |  |
| 2 |  | 组件核心团队 | 1d? | 2020-11-15 | 2020-11-15 |  |
| 3 |  | 干系人分析 | 1d? | 2020-11-15 | 2020-11-15 |  |
| 4 |  | 里程碑计划 | 1d? | 2020-11-15 | 2020-11-15 |  |
| 5 |  | 制定项目章程 | 1d? | 2020-11-15 | 2020-11-15 |  |
| 6 |  | 启动项目大会 | 1d? | 2020-11-15 | 2020-11-15 |  |
| 7 | 2 | **规划** | 24d | 2020-11-12 | 2020-12-15 |  |
| 8 |  | 规划范围 | 1d | 2020-11-12 | 2020-11-12 | 23d |
| 9 | 2.2 | **制定需求说明书** | 1d | 2020-11-12 | 2020-11-12 | 0d |
| 10 |  | 界面设计 | 1d | 2020-11-12 | 2020-11-12 |  |
| 11 |  | 详细说明规划书 | 1d | 2020-11-12 | 2020-11-12 |  |
| 12 |  | 项目范围说明书 | 1d | 2020-11-12 | 2020-11-12 |  |
| 13 |  | 创建WBS | 1d | 2020-11-12 | 2020-11-12 |  |
| 14 | 2.3 | **形成范围基准** | 1d | 2020-11-12 | 2020-11-12 |  |
| 15 | 2.3.1 | **规划时间** | 1d | 2020-11-12 | 2020-11-12 |  |
| 16 |  | 排列工作包顺序 | 1d | 2020-11-12 | 2020-11-12 |  |
| 17 |  | 估算资源 | 1d | 2020-11-12 | 2020-11-12 |  |
| 18 |  | 估算持续时间 | 1d | 2020-11-12 | 2020-11-12 |  |
| 19 |  | 制定进度计划 | 1d | 2020-11-12 | 2020-11-12 |  |
| 20 |  | 形成进度基准 | 1d | 2020-11-12 | 2020-11-12 |  |
| 21 | 2.3.2 | **规划成本** | 1d | 2020-11-12 | 2020-11-12 |  |
| 22 |  | 项目成本估算 | 1d | 2020-11-12 | 2020-11-12 |  |
| 23 |  | 项目预算 | 1d | 2020-11-12 | 2020-11-12 |  |
| 24 |  | 形成范围基准 | 1d | 2020-11-12 | 2020-11-12 |  |
| 25 | 2.3.3 | **规划质量** | 1d | 2020-11-12 | 2020-11-12 |  |
| 26 |  | 制定测试计划 | 1d | 2020-11-12 | 2020-11-12 |  |
| 27 |  | 指定测试用例 | 1d | 2020-11-12 | 2020-11-12 |  |
| 28 | 2.3.4 | **规划人力资源** | 1d | 2020-11-12 | 2020-11-12 |  |
| 29 |  | 制定人力资源计划 | 1d | 2020-11-12 | 2020-11-12 |  |
| 30 |  | 制定人力配备管理计划 | 1d | 2020-11-12 | 2020-11-12 |  |
| 31 | 2.3.5 | **规划沟通** | 1d | 2020-11-12 | 2020-11-12 |  |
| 32 |  | 制定沟通管理计划 | 1d | 2020-11-12 | 2020-11-12 |  |
| 33 | 2.3.6 | **规划采购** | 1d | 2020-11-12 | 2020-11-12 |  |
| 34 |  | 自制外购计划 | 1d | 2020-11-12 | 2020-11-12 |  |
| 35 |  | 制定采购文件 | 1d | 2020-11-12 | 2020-11-12 |  |
| 36 | 2.3.7 | **规划风险** | 1d | 2020-11-12 | 2020-11-12 |  |
| 37 |  | 识别风险 | 1d | 2020-11-12 | 2020-11-12 |  |
| 38 |  | 风险分析 | 1d | 2020-11-12 | 2020-11-12 |  |
| 39 |  | 制定风险登记册 | 1d | 2020-11-12 | 2020-11-12 |  |
| 40 |  | 规划整合 | 1d | 2020-11-12 | 2020-11-12 |  |
| 41 | 3 | **执行与监控** | 1d | 2020-11-27 | 2020-11-27 |  |
| 42 |  | 组建项目团队 | 1d | 2020-11-27 | 2020-11-27 |  |
| 43 | 3.2 | **项目执行** | 22d | 2020-11-10 | 2020-12-10 |  |
| 44 | 3.2.1 | **首页模块** | 1d | 2020-11-10 | 2020-11-11 |  |
| 45 |  | 搜索笔记 | 1d | 2020-11-10 | 2020-11-11 |  |
| 46 |  | 笔记展示 | 1d | 2020-11-10 | 2020-11-11 |  |
| 47 | 3.2.2 | **用户模块** | 1d | 2020-11-10 | 2020-11-11 |  |
| 48 |  | 注册登录 | 1d | 2020-11-10 | 2020-11-11 |  |
| 49 |  | 首页 | 1d | 2020-11-10 | 2020-11-11 |  |
| 50 |  | 收藏夹 | 1d | 2020-11-10 | 2020-11-11 |  |
| 51 |  | 关注 | 1d | 2020-11-10 | 2020-11-11 |  |
| 52 |  | 发布笔记 | 1d | 2020-11-10 | 2020-11-11 |  |
| 53 |  | 发送消息 | 1d | 2020-11-10 | 2020-11-11 |  |
| 54 |  | 个人设置 | 1d | 2020-11-10 | 2020-11-11 |  |
| 55 | 3.2.3 | **笔记模块** | 1d | 2020-11-10 | 2020-11-11 |  |
| 56 |  | 点赞、评论、收藏笔记 | 1d | 2020-11-10 | 2020-11-11 |  |
| 57 |  | 展示笔记内容 | 1d | 2020-11-10 | 2020-11-11 |  |
| 58 | 3.2.4 | **发现模块** | 1d | 2020-11-10 | 2020-11-11 |  |
| 59 |  | 同城笔记展示 | 1d | 2020-11-10 | 2020-11-11 |  |
| 60 |  | 关注用户笔记展示 | 1d | 2020-11-10 | 2020-11-11 |  |
| 61 | 3.2.5 | **线上旅游模块** | 1d | 2020-11-10 | 2020-11-11 |  |
| 62 |  | 旅游线路简介 | 1d | 2020-11-10 | 2020-11-11 |  |
| 63 |  | 线上旅游打卡 | 1d | 2020-11-10 | 2020-11-11 |  |
| 64 | 3.3 | **项目监控** | 2d | 2020-12-11 | 2020-12-13 |  |
| 65 |  | 各项指标监控 | 1d | 2020-12-11 | 2020-12-11 |  |
| 66 |  | 监控评审 | 1d | 2020-12-11 | 2020-12-11 |  |
| 67 |  | 变更评审 | 1d | 2020-12-11 | 2020-12-11 |  |
| 68 |  | 例会 | 1d | 2020-12-11 | 2020-12-11 |  |
| 69 | 3.4 | **管理干系人** | 2d | 2020-12-13 | 2020-12-14 |  |
| 70 |  | 发布项目信息 | 1d | 2020-12-13 | 2020-12-13 |  |

| ID | WBS | Task | Duration | Start | Finish |
| --- | --- | --- | --- | --- | --- |
| 71 |  | 报告监控指标 | 1d | 2020-12-13 | 2020-12-13 |
| 72 |  | 干系人沟通 | 1d | 2020-12-13 | 2020-12-13 |
| 73 | 3.5 | **团队建设** | 2d | 2020-12-14 | 2020-12-15 |
| 74 |  | 培训 | 1d | 2020-12-14 | 2020-12-14 |
| 75 |  | 娱乐活动 | 1d | 2020-12-14 | 2020-12-14 |
| 76 |  | 沟通 | 1d | 2020-12-14 | 2020-12-14 |
| 77 |  | 采购 | 1d | 2020-12-14 | 2020-12-14 |
| 78 |  | 项目验收 | 1d | 2020-12-14 | 2020-12-14 |
| 79 | 3.6 | **收尾** | 1d | 2020-12-15 | 2020-12-15 |
| 80 |  | 项目终验 | 1d | 2020-12-15 | 2020-12-15 |
| 81 |  | 结束采购 | 1d | 2020-12-15 | 2020-12-15 |
| 82 |  | 项目内部收尾 | 1d | 2020-12-15 | 2020-12-15 |

## Version 2 (saved 2020-12-01)

Note of the change: ttt

Last finish 2020-12-15 → 2020-10-22 (-54d).

Added:

| ID | Task | Duration | Start | Finish | Predecessors | Resources |
| --- | --- | --- | --- | --- | --- | --- |
| 47 | 首页功能展示 | 0.5d | 2020-10-14 | 2020-10-14 | 45, 46 | UI专家; 程序员1; 项目经理; 需求专家; 质量专家 |
| 56 | 用户模块功能展示 | 0.5d | 2020-10-20 | 2020-10-20 | 49, 50, 51, 52, 53, 54, 55 | UI专家; 程序员2; 程序员3; 设计专家; 项目经理; 需求专家; 质量专家 |
| 60 | 笔记模块功能展示 | 0.5d | 2020-10-16 | 2020-10-16 | 58, 59 | UI专家; 程序员1; 设计专家; 项目经理; 需求专家; 质量专家 |
| 64 | 发现模块功能展示 | 0.5d | 2020-10-16 | 2020-10-16 | 62, 63 | UI专家; 程序员2; 设计专家; 项目经理; 需求专家; 质量专家 |
| 68 | 线上旅游功能展示 | 0.5d | 2020-10-19 | 2020-10-19 | 66, 67 | UI专家; 程序员1; 程序员2; 程序员3; 设计专家; 项目经理; 需求专家; 质量专家 |

Removed: 81 结束采购; 82 项目内部收尾

Changed:

| ID | Task | Start | Finish | Duration | Total float | Predecessors | Other |
| --- | --- | --- | --- | --- | --- | --- | --- |
| 1 | **启动** | 2020-11-27 → 2020-09-13 (-75d) | 2020-11-27 → 2020-09-17 (-71d) | 1d → 5d |  |  |  |
| 2 | 组建核心团队 | 2020-11-15 → 2020-09-13 (-63d) | 2020-11-15 → 2020-09-13 (-63d) | 1d? → 1d |  |  | was named 组件核心团队; resources none → 项目经理; UI专家; 需求专家; 质量专家; 程序员1; 测试员1; 设计专家; 程序员2; 程序员3; 测试员2 |
| 3 | 干系人分析 | 2020-11-15 → 2020-09-13 (-63d) | 2020-11-15 → 2020-09-13 (-63d) | 1d? → 1d |  |  | resources none → 项目经理 [70%]; 需求专家 [30%] |
| 4 | 里程碑计划 | 2020-11-15 → 2020-09-13 (-63d) | 2020-11-15 → 2020-09-13 (-63d) | 1d? → 1d |  |  | resources none → 项目经理 |
| 5 | 制定项目章程 | 2020-11-15 → 2020-09-14 (-62d) | 2020-11-15 → 2020-09-14 (-62d) | 1d? → 1d |  | none → 2, 3, 4 | resources none → 项目经理 |
| 6 | 项目启动大会 | 2020-11-15 → 2020-09-17 (-59d) | 2020-11-15 → 2020-09-17 (-59d) | 1d? → 1d |  | none → 5 | was named 启动项目大会; resources none → 项目经理; 需求专家; UI专家; 测试员1; 测试员2; 程序员1; 程序员2; 程序员3; 设计专家; 质量专家 |
| 7 | **规划** | 2020-11-12 → 2020-09-18 (-55d) | 2020-12-15 → 2020-10-09 (-67d) | 24d → 16d |  |  |  |
| 8 | **规划范围** | 2020-11-12 → 2020-09-18 (-55d) | 2020-11-12 → 2020-09-23 (-50d) | 1d → 4d | 23d → none |  |  |
| 9 | 制定需求说明书 | 2020-11-12 → 2020-09-18 (-55d) | 2020-11-12 → 2020-09-18 (-55d) |  | 0d → none | none → 6 | resources none → 需求专家 |
| 10 | 界面设计 | 2020-11-12 → 2020-09-19 (-54d) | 2020-11-12 → 2020-09-19 (-54d) |  |  | none → 9 | resources none → UI专家 |
| 11 | 详细设计说明书 | 2020-11-12 → 2020-09-19 (-54d) | 2020-11-12 → 2020-09-19 (-54d) |  |  | none → 9 | was named 详细说明规划书; resources none → 设计专家 |
| 12 | 项目范围说明书 | 2020-11-12 → 2020-09-19 (-54d) | 2020-11-12 → 2020-09-19 (-54d) |  |  | none → 9 | resources none → 项目经理 |
| 13 | 创建WBS | 2020-11-12 → 2020-09-20 (-53d) | 2020-11-12 → 2020-09-20 (-53d) |  |  | none → 10, 11, 12 | resources none → 项目经理 |
| 14 | 形成范围基准 | 2020-11-12 → 2020-09-21 (-52d) | 2020-11-12 → 2020-09-21 (-52d) |  |  | none → 13 | resources none → 项目经理 |
| 15 | **规划时间** | 2020-11-12 → 2020-09-24 (-49d) | 2020-11-12 → 2020-09-28 (-45d) | 1d → 3d |  |  |  |
| 16 | 排列工作包顺序 | 2020-11-12 → 2020-09-24 (-49d) | 2020-11-12 → 2020-09-24 (-49d) |  |  | none → 14 | resources none → 项目经理 |
| 17 | 估算资源 | 2020-11-12 → 2020-09-25 (-48d) | 2020-11-12 → 2020-09-25 (-48d) |  |  | none → 16 | resources none → 项目经理 |
| 18 | 估算持续时间 | 2020-11-12 → 2020-09-26 (-47d) | 2020-11-12 → 2020-09-26 (-47d) |  |  | none → 17 | resources none → 项目经理 |
| 19 | 制定进度计划 | 2020-11-12 → 2020-09-27 (-46d) | 2020-11-12 → 2020-09-27 (-46d) |  |  | none → 18 | resources none → 项目经理 |
| 20 | 形成进度基准 | 2020-11-12 → 2020-09-28 (-45d) | 2020-11-12 → 2020-09-28 (-45d) |  |  | none → 19 | resources none → 项目经理 |
| 21 | **规划成本** | 2020-11-12 → 2020-10-01 (-42d) | 2020-11-12 → 2020-10-03 (-40d) | 1d → 3d |  |  |  |
| 22 | 项目成本估算 | 2020-11-12 → 2020-10-01 (-42d) | 2020-11-12 → 2020-10-01 (-42d) |  |  | none → 20 | resources none → 项目经理 |
| 23 | 项目预算 | 2020-11-12 → 2020-10-02 (-41d) | 2020-11-12 → 2020-10-02 (-41d) |  |  | none → 22 | resources none → 项目经理 |
| 24 | 行成范围基准 | 2020-11-12 → 2020-10-03 (-40d) | 2020-11-12 → 2020-10-03 (-40d) |  |  | none → 23 | was named 形成范围基准; resources none → 项目经理 |
| 25 | **规划质量** | 2020-11-12 → 2020-09-24 (-49d) | 2020-11-12 → 2020-09-25 (-48d) | 1d → 2d |  |  |  |
| 26 | 制定测试计划 | 2020-11-12 → 2020-09-24 (-49d) | 2020-11-12 → 2020-09-24 (-49d) |  |  | none → 14 | resources none → 质量专家 |
| 27 | 指定测试用例 | 2020-11-12 → 2020-09-25 (-48d) | 2020-11-12 → 2020-09-25 (-48d) |  |  | none → 26 | resources none → 质量专家 |
| 28 | **规划人力资源** | 2020-11-12 → 2020-09-26 (-47d) | 2020-11-12 → 2020-09-27 (-46d) | 1d → 2d |  |  |  |
| 29 | 制定人力资源计划 | 2020-11-12 → 2020-09-26 (-47d) | 2020-11-12 → 2020-09-26 (-47d) |  |  | none → 17 | resources none → 项目经理 |
| 30 | 制定人力配备管理计划 | 2020-11-12 → 2020-09-27 (-46d) | 2020-11-12 → 2020-09-27 (-46d) |  |  | none → 29 | resources none → 项目经理 |
| 31 | **规划沟通** | 2020-11-12 → 2020-09-28 (-45d) | 2020-11-12 → 2020-09-28 (-45d) |  |  |  |  |
| 32 | 制定沟通管理计划 | 2020-11-12 → 2020-09-28 (-45d) | 2020-11-12 → 2020-09-28 (-45d) |  |  | none → 30 | resources none → 项目经理 |
| 33 | **规划采购** | 2020-11-12 → 2020-09-26 (-47d) | 2020-11-12 → 2020-09-27 (-46d) | 1d → 2d |  |  |  |
| 34 | 自制外购计划 | 2020-11-12 → 2020-09-26 (-47d) | 2020-11-12 → 2020-09-26 (-47d) |  |  | none → 17 | resources none → 项目经理 |
| 35 | 制定采购文件 | 2020-11-12 → 2020-09-27 (-46d) | 2020-11-12 → 2020-09-27 (-46d) |  |  | none → 34 | resources none → 项目经理 |
| 36 | **规划风险** | 2020-11-12 → 2020-10-04 (-39d) | 2020-11-12 → 2020-10-08 (-35d) | 1d → 5d |  |  |  |
| 37 | 识别风险 | 2020-11-12 → 2020-10-04 (-39d) | 2020-11-12 → 2020-10-04 (-39d) |  |  | none → 15, 21, 25, 28 | resources none → 项目经理 |
| 38 | 风险分析 | 2020-11-12 → 2020-10-05 (-38d) | 2020-11-12 → 2020-10-05 (-38d) |  |  | none → 37 | resources none → 项目经理 |
| 39 | 制定风险登记册 | 2020-11-12 → 2020-10-08 (-35d) | 2020-11-12 → 2020-10-08 (-35d) |  |  | none → 38 | resources none → 项目经理 |
| 40 | 规划整合 | 2020-11-12 → 2020-10-09 (-34d) | 2020-11-12 → 2020-10-09 (-34d) |  |  | none → 39 | resources none → 项目经理 |
| 41 | **执行与监控** | 2020-11-27 → 2020-10-10 (-48d) | 2020-11-27 → 2020-10-22 (-36d) | 1d → 10d |  |  |  |
| 42 | 组建项目团队 | 2020-11-27 → 2020-10-12 (-46d) | 2020-11-27 → 2020-10-12 (-46d) | 1d → 0.5d |  | none → 7 | resources none → UI专家; 测试员1; 测试员2; 程序员1; 程序员2; 程序员3; 设计专家; 项目经理; 需求专家; 质量专家 |
| 43 | **项目执行** | 2020-11-10 → 2020-10-11 (-30d) | 2020-12-10 → 2020-10-20 (-51d) | 22d → 8d |  |  |  |
| 44 | **首页模块** | 2020-11-10 → 2020-10-11 (-30d) | 2020-11-11 → 2020-10-13 (-29d) | 1d → 3d |  |  |  |
| 45 | 搜索笔记 | 2020-11-10 → 2020-10-12 (-29d) | 2020-11-11 → 2020-10-13 (-29d) | 1d → 2d |  | none → 42 | resources none → 程序员1 |
| 46 | 笔记展示 | 2020-11-10 → 2020-10-12 (-29d) | 2020-11-11 → 2020-10-12 (-30d) |  |  | none → 42 | resources none → 程序员1 |
| 48 | **用户模块** | 2020-11-10 → 2020-10-11 (-30d) | 2020-11-11 → 2020-10-19 (-23d) | 1d → 7d |  |  |  |
| 49 | 注册登录 | 2020-11-10 → 2020-10-12 (-29d) | 2020-11-11 → 2020-10-12 (-30d) |  |  | none → 42 | resources none → 程序员2 |
| 50 | 首页 | 2020-11-10 → 2020-10-14 (-27d) | 2020-11-11 → 2020-10-14 (-28d) |  |  | none → 45 | resources none → 程序员2 |
| 51 | 收藏夹 | 2020-11-10 → 2020-10-13 (-28d) | 2020-11-11 → 2020-10-13 (-29d) |  |  | none → 49 | resources none → 程序员2 |
| 52 | 关注 | 2020-11-10 → 2020-10-13 (-28d) | 2020-11-11 → 2020-10-13 (-29d) |  |  | none → 49 | resources none → 程序员3 |
| 53 | 发布笔记 | 2020-11-10 → 2020-10-13 (-28d) | 2020-11-11 → 2020-10-19 (-23d) | 1d → 5d |  | none → 49 | resources none → 程序员3 |
| 54 | 发送消息 | 2020-11-10 → 2020-10-13 (-28d) | 2020-11-11 → 2020-10-18 (-24d) | 1d → 5d |  | none → 49 | resources none → 程序员3 |
| 55 | 个人设置 | 2020-11-10 → 2020-10-13 (-28d) | 2020-11-11 → 2020-10-16 (-26d) | 1d → 4d |  | none → 49 | resources none → 程序员3 |
| 57 | **笔记模块** | 2020-11-10 → 2020-10-13 (-28d) | 2020-11-11 → 2020-10-16 (-26d) | 1d → 4d |  |  |  |
| 58 | 点赞、评论、收藏笔记 | 2020-11-10 → 2020-10-13 (-28d) | 2020-11-11 → 2020-10-15 (-27d) | 1d → 3d |  | none → 46 | resources none → 程序员1 |
| 59 | 展示笔记内容 | 2020-11-10 → 2020-10-13 (-28d) | 2020-11-11 → 2020-10-14 (-28d) | 1d → 2d |  | none → 46 | resources none → 程序员1 |
| 61 | **发现模块** | 2020-11-10 → 2020-10-14 (-27d) | 2020-11-11 → 2020-10-16 (-26d) | 1d → 3d |  |  |  |
| 62 | 同城笔记展示 | 2020-11-10 → 2020-10-14 (-27d) | 2020-11-11 → 2020-10-14 (-28d) |  |  | none → 45, 46 | resources none → 程序员2 |
| 63 | 关注用户笔记展示 | 2020-11-10 → 2020-10-14 (-27d) | 2020-11-11 → 2020-10-15 (-27d) | 1d → 2d |  | none → 42, 46, 52 | resources none → 程序员2 |
| 65 | **线上旅游模块** | 2020-11-10 → 2020-10-13 (-28d) | 2020-11-11 → 2020-10-19 (-23d) | 1d → 5d |  |  |  |
| 66 | 旅游线路简介 | 2020-11-10 → 2020-10-12 (-29d) | 2020-11-11 → 2020-10-12 (-30d) |  |  | none → 42 | resources none → 程序员1 |
| 67 | 线上旅游打卡 | 2020-11-10 → 2020-10-13 (-28d) | 2020-11-11 → 2020-10-16 (-26d) | 1d → 4d |  | none → 66 | resources none → 程序员2; 程序员3 |
| 69 | **项目监控** | 2020-12-11 → 2020-10-11 (-61d) | 2020-12-13 → 2020-10-20 (-54d) | 2d → 8d |  |  |  |
| 70 | 各项指标监控 | 2020-12-11 → 2020-10-13 (-59d) | 2020-12-11 → 2020-10-13 (-59d) |  |  | none → 42 | resources none → 测试员1; UI专家; 设计专家; 项目经理; 需求专家; 质量专家 |
| 71 | 监控评审 | 2020-12-11 → 2020-10-14 (-58d) | 2020-12-11 → 2020-10-14 (-58d) |  |  | none → 70 | resources none → UI专家; 设计专家; 项目经理; 需求专家; 质量专家 |
| 72 | 变更评审 | 2020-12-11 → 2020-10-15 (-57d) | 2020-12-11 → 2020-10-15 (-57d) |  |  | none → 71 | resources none → UI专家; 设计专家; 项目经理; 需求专家; 质量专家 |
| 73 | 例会 | 2020-12-11 → 2020-10-13 (-59d) | 2020-12-11 → 2020-10-13 (-59d) |  |  | none → 42 | resources none → UI专家; 测试员1; 测试员2; 程序员1; 程序员2; 程序员3; 设计专家; 项目经理; 需求专家; 质量专家 |
| 74 | **管理干系人** | 2020-12-13 → 2020-10-13 (-61d) | 2020-12-14 → 2020-10-13 (-62d) | 2d → 1d |  |  |  |
| 75 | 发布项目信息 | 2020-12-13 → 2020-10-13 (-61d) | 2020-12-13 → 2020-10-13 (-61d) |  |  | none → 42 | resources none → 项目经理 |

| ID | Task | Start | Finish | Duration | Predecessors | Other |
| --- | --- | --- | --- | --- | --- | --- |
| 76 | 报告监控指标 | 2020-12-13 → 2020-10-13 (-61d) | 2020-12-13 → 2020-10-13 (-61d) |  | none → 42 | resources none → 项目经理 |
| 77 | 干系人沟通 | 2020-12-13 → 2020-10-13 (-61d) | 2020-12-13 → 2020-10-13 (-61d) |  | none → 42 | resources none → 项目经理 |
| 78 | **团队建设** | 2020-12-14 → 2020-10-13 (-62d) | 2020-12-15 → 2020-10-13 (-63d) | 2d → 1d |  |  |
| 79 | 培训 | 2020-12-14 → 2020-10-13 (-62d) | 2020-12-14 → 2020-10-13 (-62d) |  | none → 42 | resources none → UI专家; 测试员1; 测试员2; 程序员1; 程序员2; 程序员3; 设计专家; 项目经理; 需求专家; 质量专家 |
| 80 | 娱乐活动 | 2020-12-14 → 2020-10-13 (-62d) | 2020-12-14 → 2020-10-13 (-62d) |  | none → 42 | resources none → UI专家; 测试员1; 测试员2; 程序员1; 程序员2; 程序员3; 设计专家; 项目经理; 需求专家; 质量专家 |
| 81 | 沟通 | 2020-12-14 → 2020-10-13 (-62d) | 2020-12-14 → 2020-10-13 (-62d) |  | none → 42 | resources none → UI专家; 测试员1; 测试员2; 程序员1; 程序员2; 程序员3; 设计专家; 项目经理; 需求专家; 质量专家 |
| 82 | 采购 | 2020-12-14 → 2020-10-13 (-62d) | 2020-12-14 → 2020-10-13 (-62d) |  | none → 42 | resources none → 项目经理 |
| 83 | 项目验收 | 2020-12-14 → 2020-10-21 (-54d) | 2020-12-14 → 2020-10-21 (-54d) |  | none → 43 | resources none → UI专家; 测试员1; 测试员2; 程序员1; 程序员2; 程序员3; 设计专家; 项目经理; 需求专家; 质量专家 |
| 84 | **收尾** | 2020-12-15 → 2020-10-22 (-54d) | 2020-12-15 → 2020-10-22 (-54d) |  |  |  |
| 85 | 项目终验 | 2020-12-15 → 2020-10-22 (-54d) | 2020-12-15 → 2020-10-22 (-54d) |  | none → 83 | resources none → UI专家; 设计专家; 项目经理; 需求专家; 质量专家 |

## Version 3 (saved 2020-12-07)

Note of the change: new uoload

Last finish stays 2020-10-22. Complete tasks 0 → 1.

Changed:

| ID | Task | Start | Finish | Duration | Complete | Other |
| --- | --- | --- | --- | --- | --- | --- |
| 1 | **启动** |  | 2020-09-17 → 2020-09-16 (-1d) | 5d → 4d |  | resources none → 储备资金 [0.1%]; 间接成本 [0.1%] |
| 7 | **规划** | 2020-09-18 A |  |  | 0% → 4% | resources none → 储备资金 [0.1%]; 间接成本 [0.1%] |
| 8 | **规划范围** | 2020-09-18 A |  |  | 0% → 17% |  |
| 9 | 制定需求说明书 | 2020-09-18 A | 2020-09-18 A |  | 0% → 100% |  |
| 41 | **执行与监控** |  |  |  |  | resources none → 储备资金 [0.1%]; 间接成本 [0.1%] |
| 84 | **收尾** |  |  |  |  | resources none → 储备资金 [0.1%]; 间接成本 [0.1%] |

## Version 4 (saved 2020-12-07)

Last finish stays 2020-10-22. Complete tasks 1 → 0.

Changed:

| ID | Task | Start | Finish | Complete |
| --- | --- | --- | --- | --- |
| 7 | **规划** | 2020-09-18 A → 2020-09-18 |  | 4% → 0% |
| 8 | **规划范围** | 2020-09-18 A → 2020-09-18 |  | 17% → 0% |
| 9 | 制定需求说明书 | 2020-09-18 A → 2020-09-18 | 2020-09-18 A → 2020-09-18 | 100% → 0% |
